activity_id,activity_name,wbs,start,finish,original_duration,remaining_duration,total_float,percent_complete,status,predecessors,successors,responsibility
HARE-1000,NTP and site mobilization,1.1 Civil,2026-03-02,2026-03-20,15,0,0,100,Completed,,HARE-1100,Contractor
HARE-1100,Site grading and drainage,1.1 Civil,2026-03-23,2026-06-12,58,8,2,88,In Progress,HARE-1000,HARE-1200,Civil
HARE-2100,Control building foundation,1.2 Foundations,2026-06-15,2026-09-11,62,12,-4,72,In Progress,HARE-1100,HARE-2200,Civil
HARE-2200,Transformer foundation and oil containment,1.2 Foundations,2026-07-06,2026-09-25,58,18,-6,55,In Progress,HARE-1100,HARE-3100,Civil
HARE-3100,345 kV transformer delivery,1.3 Equipment,2026-09-08,2026-10-16,28,22,0,15,In Progress,HARE-2200,HARE-4100,Procurement
